# wbs-barbooking

Schedule from MS Project, 2022-12-13 to 2023-04-29, costs in €.

## Calendars

- Standard: Mon-Fri 09:00-13:00, 14:00-18:00; Sat-Sun off.

## Resources

| Resource | Rate |
| --- | --- |
| Mirko Cerati | 16 |
| Gioia Bertin | 50 |
| Gabriela Badarau | 25 |
| Lorenzo Marcato | 16 |
| Lo |  |

## Schedule

| ID | WBS | Task | Duration | Start | Finish | Predecessors | Total slack | Free slack | Constraint | Resources | Work | Cost |
| --- | --- | --- | --- | --- | --- | --- | --- | --- | --- | --- | --- | --- |
| 1 | 1 | **Bar Booking** | 99d | 2022-12-13 | 2023-04-29 |  | 0d |  |  |  | 1378h | 46,604 |
| 2 | 1.1 | **AVVIO** | 12d | 2022-12-13 | 2022-12-28 |  | 68d | 0d |  |  | 576h | 24,000 |
| 3 | 1.1.1 | **Documenti iniziali di progetto** | 12d | 2022-12-13 | 2022-12-28 |  | 68d |  |  |  | 576h | 24,000 |
| 4 | 1.1.1.1 | Studio fattibilità | 12d | 2022-12-13 | 2022-12-28 |  | 68d |  | start no earlier than 2022-12-13 | Gabriela Badarau; Gioia Bertin | 192h | 7,200 |
| 5 | 1.1.1.2 | Analisi contesto | 12d | 2022-12-13 | 2022-12-28 |  | 68d |  | start no earlier than 2022-12-13 | Gioia Bertin | 96h | 4,800 |
| 6 | 1.1.1.3 | Analisi dei rischi | 12d | 2022-12-13 | 2022-12-28 |  | 68d |  | start no earlier than 2022-12-13 | Gabriela Badarau; Gioia Bertin | 192h | 7,200 |
| 7 | 1.1.1.4 | Project Charter | 12d | 2022-12-13 | 2022-12-28 |  | 68d |  | start no earlier than 2022-12-13 | Gioia Bertin | 96h | 4,800 |
| 8 | 1.2 | **PIANIFICAZIONE** | 3d | 2022-12-29 | 2023-01-02 | 2 | 68d | 21d |  |  | 184h | 6,240 |
| 9 | 1.2.1 | **Documenti iniziali di progetto** | 3d | 2022-12-29 | 2023-01-02 |  | 68d |  |  |  | 152h | 5,184 |
| 10 | 1.2.1.1 | WBS - WP | 1d | 2022-12-29 | 2022-12-29 |  | 70d |  | start no earlier than 2022-12-29 | Gabriela Badarau; Gioia Bertin | 16h | 600 |
| 11 | 1.2.1.2 | GANTT | 3d | 2022-12-29 | 2023-01-02 |  | 68d |  | start no earlier than 2022-12-29 | Gabriela Badarau; Gioia Bertin | 48h | 1,800 |
| 12 | 1.2.1.3 | RAM | 1d | 2022-12-29 | 2022-12-29 |  | 70d |  | start no earlier than 2022-12-29 | Gabriela Badarau; Gioia Bertin | 16h | 600 |
| 13 | 1.2.1.4 | Stime di costo (BCWS) | 3d | 2022-12-29 | 2023-01-02 |  | 68d |  | start no earlier than 2022-12-29 | Gabriela Badarau; Gioia Bertin; Lorenzo Marcato | 72h | 2,184 |
| 14 | 1.2.2 | Anilisi statistica tramite sondaggio | 2d | 2022-12-29 | 2022-12-30 |  | 69d |  | start no earlier than 2022-12-29 | Gioia Bertin; Lorenzo Marcato | 32h | 1,056 |
| 15 | 1.3 | **REALIZZAZIONE** | 54d | 2023-02-01 | 2023-04-17 | 8 | 6d |  |  |  | 402h | 9,828 |
| 16 | 1.3.1 | Documenti di sviluppo prodotto | 2d | 2023-02-01 | 2023-02-02 |  | 58d |  | start no earlier than 2023-02-01 | Gabriela Badarau; Gioia Bertin; Mirko Cerati | 48h | 1,456 |
| 17 | 1.3.2 | requisiti!! | 2d | 2023-02-01 | 2023-02-02 |  | 58d |  | start no earlier than 2023-02-01 |  |  |  |
| 18 | 1.3.3 | **Sviluppo prodotto** | 13d | 2023-03-30 | 2023-04-17 |  | 6d |  |  |  | 354h | 8,372 |
| 19 | 1.3.3.1 | **Creazione del sito web** | 5d | 2023-03-30 | 2023-04-05 |  | 6d | 0d |  |  | 162h | 4,292 |
| 20 | 1.3.3.1.1 | **Configurazione del dominio** | 0.25d | 2023-04-05 | 2023-04-05 |  | 6d |  |  |  | 10h | 228 |
| 21 | 1.3.3.1.1.1 | Registrazione | 2h | 2023-04-05 | 2023-04-05 |  | 6d |  | finish no earlier than 2023-04-05 | Mirko Cerati | 2h | 32 |
| 22 | 1.3.3.1.1.2 | Impostazione DNS | 2h | 2023-04-05 | 2023-04-05 |  | 6d |  | finish no earlier than 2023-04-05 | Lorenzo Marcato; Gioia Bertin | 4h | 132 |
| 23 | 1.3.3.1.1.3 | Controllo connession SSL | 2h | 2023-04-05 | 2023-04-05 |  | 6d |  | finish no earlier than 2023-04-05 | Lorenzo Marcato; Mirko Cerati | 4h | 64 |
| 24 | 1.3.3.1.2 | **Organizzazione spazio web** | 5d | 2023-03-30 | 2023-04-05 |  | 6d |  |  |  | 152h | 4,064 |
| 25 | 1.3.3.1.2.1 | Configurazione tema | 5d | 2023-03-30 | 2023-04-05 |  | 6d |  | finish no earlier than 2023-04-05 | Mirko Cerati | 40h | 640 |
| 26 | 1.3.3.1.2.2 | Creazione logo | 2d | 2023-04-04 | 2023-04-05 |  | 6d |  | finish no earlier than 2023-04-05 | Lorenzo Marcato | 16h | 256 |

| ID | WBS | Task | Duration | Start | Finish | Predecessors | Total slack | Free slack | Constraint | Resources | Work | Cost |
| --- | --- | --- | --- | --- | --- | --- | --- | --- | --- | --- | --- | --- |
| 27 | 1.3.3.1.2.3 | **Inserimento dei contenuti** | 3d | 2023-04-03 | 2023-04-05 |  | 6d |  |  |  | 80h | 2,640 |
| 28 | 1.3.3.1.2.3.1 | Home Page | 3d | 2023-04-03 | 2023-04-05 |  | 6d |  | finish no earlier than 2023-04-05 | Lorenzo Marcato; Gioia Bertin | 48h | 1,584 |
| 29 | 1.3.3.1.2.3.2 | Prodotti | 2d | 2023-04-04 | 2023-04-05 |  | 6d |  | finish no earlier than 2023-04-05 | Gioia Bertin | 16h | 800 |
| 30 | 1.3.3.1.2.3.3 | Info (cookie, privacy etc..) | 2d | 2023-04-04 | 2023-04-05 |  | 6d |  | finish no earlier than 2023-04-05 | Mirko Cerati | 16h | 256 |
| 31 | 1.3.3.1.2.4 | Configurazione metodi di pagamento | 1d | 2023-04-05 | 2023-04-05 |  | 6d |  | finish no earlier than 2023-04-05 | Lorenzo Marcato; Gioia Bertin | 16h | 528 |
| 32 | 1.3.3.2 | **INTEGRAZIONE CON DATABASE** | 4d | 2023-04-06 | 2023-04-11 | 19 | 6d | 0d |  |  | 112h | 2,800 |
| 33 | 1.3.3.2.1 | **Progettazione del database** | 4d | 2023-04-06 | 2023-04-11 |  | 6d |  |  |  | 48h | 1,200 |
| 34 | 1.3.3.2.1.1 | schema concettuale | 4d | 2023-04-06 | 2023-04-11 |  | 6d |  | finish no earlier than 2023-04-05 | Gabriela Badarau | 32h | 800 |
| 35 | 1.3.3.2.1.2 | schema logico | 2d | 2023-04-06 | 2023-04-07 |  | 8d |  | finish no earlier than 2023-04-05 | Gabriela Badarau | 16h | 400 |
| 36 | 1.3.3.2.2 | **creazione e implementazione database** | 3d | 2023-04-06 | 2023-04-10 |  | 7d |  |  |  | 64h | 1,600 |
| 37 | 1.3.3.2.2.1 | gestione materie prime | 3d | 2023-04-06 | 2023-04-10 |  | 7d |  | finish no earlier than 2023-04-05 | Gabriela Badarau | 24h | 600 |
| 38 | 1.3.3.2.2.2 | gestione prodotti finiti | 3d | 2023-04-06 | 2023-04-10 |  | 7d |  | finish no earlier than 2023-04-05 | Gabriela Badarau | 24h | 600 |
| 39 | 1.3.3.2.2.3 | contatti fornitori | 2d | 2023-04-06 | 2023-04-07 |  | 8d |  | finish no earlier than 2023-04-05 | Gabriela Badarau | 16h | 400 |
| 40 | 1.3.3.3 | **INTEGRAZIONE CASSA** | 4d | 2023-04-12 | 2023-04-17 | 32 | 6d |  |  |  | 80h | 1,280 |
| 41 | 1.3.3.3.1 | creazione profilo amministratore-cassiere | 1d | 2023-04-12 | 2023-04-12 |  | 9d |  | start no earlier than 2023-02-03 | Mirko Cerati | 8h | 128 |
| 42 | 1.3.3.3.2 | implementazione metodi pagamento | 1d | 2023-04-12 | 2023-04-12 |  | 9d |  | start no earlier than 2023-02-03 | Lorenzo Marcato | 8h | 128 |
| 43 | 1.3.3.3.3 | **INTEGRAZIONE DI ANALISI E STATISTICA** | 2d | 2023-04-12 | 2023-04-13 | 32 | 8d |  |  |  |  |  |
| 44 | 1.3.3.3.3.1 | adozione programmi per report periodici | 2d | 2023-04-12 | 2023-04-13 |  | 8d |  | start no earlier than 2023-02-03 |  |  |  |
| 45 | 1.3.3.3.4 | **RIORGANIZZAZIONE RISORSE UMANE** | 4d | 2023-04-12 | 2023-04-17 |  | 6d |  |  |  | 64h | 1,024 |
| 46 | 1.3.3.3.4.1 | code separate | 4d | 2023-04-12 | 2023-04-17 |  | 6d |  | start no earlier than 2023-02-03 | Lorenzo Marcato | 32h | 512 |
| 47 | 1.3.3.3.4.2 | consegna in classe | 4d | 2023-04-12 | 2023-04-17 |  | 6d |  | start no earlier than 2023-02-03 | Mirko Cerati | 32h | 512 |
| 48 | 1.4 | **COLLAUDO - CHIUSURA** | 3d | 2023-04-26 | 2023-04-29 | 15 | 0d |  |  |  | 216h | 6,536 |
| 49 | 1.4.1 | Verbali riunioni | 2d | 2023-04-27 | 2023-04-29 |  | 0d |  | finish no earlier than 2023-04-29 | Gioia Bertin | 16h | 800 |
| 50 | 1.4.2 | Documenti di revisione | 2d | 2023-04-27 | 2023-04-29 |  | 0d |  | finish no earlier than 2023-04-29 | Gabriela Badarau; Gioia Bertin | 32h | 1,200 |
| 51 | 1.4.3 | Testing | 3d | 2023-04-26 | 2023-04-29 |  | 0d |  | finish no earlier than 2023-04-29 | Gioia Bertin; Lorenzo Marcato; Mirko Cerati | 72h | 1,968 |
| 52 | 1.4.4 | Chiusura | 2d | 2023-04-27 | 2023-04-29 |  | 0d |  | finish no earlier than 2023-04-29 | Gabriela Badarau; Gioia Bertin; Lorenzo Marcato; Mirko Cerati | 64h | 1,712 |
| 53 | 1.4.5 | Presentazione e consegna del prodotto finale | 1d | 2023-04-28 | 2023-04-29 |  | 0d |  | finish no earlier than 2023-04-29 | Gabriela Badarau; Gioia Bertin; Lorenzo Marcato; Mirko Cerati | 32h | 856 |
